# cronograma

Schedule from MS Project, 2025-10-29 to 2025-12-17, costs in R$, A marks actual dates.

## Calendars

- Padrão: Mon-Fri 09:00-12:00, 13:00-18:00; Sat-Sun off.

## Resources

| Resource | Cost per use |
| --- | --- |
| Gustavo | 80 |
| Raul | 40 |
| Kelly | 80 |

## Schedule

| ID | WBS | Task | Type | Duration | Start | Finish | Predecessors | Complete | Remaining | Baseline start | Baseline finish | Baseline duration | Baseline 1 start | Baseline 1 finish | Total slack | Resources | Work | Actual work | Cost | Baseline cost | Actual cost |
| --- | --- | --- | --- | --- | --- | --- | --- | --- | --- | --- | --- | --- | --- | --- | --- | --- | --- | --- | --- | --- | --- |
| 1 | 1 | **Projeto Forum Academico** |  | 35.67d? | 2025-10-29 09:00 A | 2025-12-17 15:24 |  | 83% | 6.17d? | 2025-10-29 09:00 | 2025-12-17 11:54 | 35.36d? | 2025-10-29 09:00 | 2025-12-17 11:54 | 0d |  | 439.62h | 361.18h | 4,490 | 4,985 | 3,730 |
| 2 | 1.1 | **Prospecção** |  | 10.25d | 2025-10-29 09:00 A | 2025-11-12 11:00 A |  | 100% |  | 2025-10-29 09:00 | 2025-11-12 11:00 | 10.25d | 2025-10-29 09:00 | 2025-11-12 11:00 |  |  | 25h | 25h | 720 | 660 | 720 |
| 3 | 1.1.1 | **PTEC** |  | 4.25d | 2025-10-29 09:00 A | 2025-11-04 11:00 A |  | 100% |  | 2025-10-29 09:00 | 2025-11-04 11:00 | 4.25d | 2025-10-29 09:00 | 2025-11-04 11:00 |  |  | 20h | 20h | 360 | 320 | 360 |
| 4 | 1.1.1.1 | Estudar Domínio de Aplicação |  | 0.25d | 2025-10-29 09:00 A | 2025-10-29 11:00 A |  | 100% |  | 2025-10-29 09:00 | 2025-10-29 11:00 | 0.25d | 2025-10-29 09:00 | 2025-10-29 11:00 |  | Kelly | 2h | 2h | 80 | 60 | 80 |
| 5 | 1.1.1.2 | Reunir-se com Fornecedor de Requsitos |  | 1d | 2025-10-29 11:00 A | 2025-10-30 11:00 A | 4 | 100% |  | 2025-10-29 11:00 | 2025-10-30 11:00 | 1d | 2025-10-29 11:00 | 2025-10-30 11:00 |  | Kelly | 4h | 4h | 80 | 60 | 80 |
| 6 | 1.1.1.3 | Redigir PTEC |  | 1d | 2025-10-30 11:00 A | 2025-11-03 11:00 A | 5 | 100% |  | 2025-10-30 11:00 | 2025-11-03 11:00 | 1d | 2025-10-30 11:00 | 2025-11-03 11:00 |  | Gustavo | 13h | 13h | 80 | 80 | 80 |
| 7 | 1.1.1.4 | Revisar proposta técnica |  | 1d | 2025-11-03 11:00 A | 2025-11-04 11:00 A | 6 | 100% |  | 2025-11-03 11:00 | 2025-11-04 11:00 | 1d | 2025-11-03 11:00 | 2025-11-04 11:00 |  | Raul | 1h | 1h | 40 | 40 | 40 |
| 8 | 1.1.1.5 | Aprovar Proposta técnica | milestone | 0d | 2025-11-04 11:00 A | 2025-11-04 11:00 A | 7 | 100% |  | 2025-11-04 11:00 | 2025-11-04 11:00 | 0d | 2025-11-04 11:00 | 2025-11-04 11:00 |  | Gustavo |  |  | 80 | 80 | 80 |
| 9 | 1.1.2 | **Est.Prel.Tam** |  | 3d | 2025-11-04 11:00 A | 2025-11-07 11:00 A |  | 100% |  | 2025-11-04 11:00 | 2025-11-07 11:00 | 3d | 2025-11-04 11:00 | 2025-11-07 11:00 |  |  | 2h | 2h | 240 | 220 | 240 |
| 10 | 1.1.2.1 | Estimar Tamanho do Projeto |  | 1d | 2025-11-04 11:00 A | 2025-11-05 11:00 A | 7 | 100% |  | 2025-11-04 11:00 | 2025-11-05 11:00 | 1d | 2025-11-04 11:00 | 2025-11-05 11:00 |  | Kelly; Raul | 1h | 1h | 120 | 100 | 120 |
| 11 | 1.1.2.2 | Revisar estimatica de tamanho do Projeto |  | 1.62d | 2025-11-05 11:00 A | 2025-11-07 11:00 A | 10 | 100% |  | 2025-11-05 11:00 | 2025-11-07 11:00 | 1.62d | 2025-11-05 11:00 | 2025-11-07 11:00 |  | Raul; Gustavo | 1h | 1h | 120 | 120 | 120 |
| 12 | 1.1.3 | **Est.Prel.Cronograma e Orçamento** |  | 3d | 2025-11-07 11:00 A | 2025-11-12 11:00 A |  | 100% |  | 2025-11-07 11:00 | 2025-11-12 11:00 | 3d | 2025-11-07 11:00 | 2025-11-12 11:00 |  |  | 3h | 3h | 120 | 120 | 120 |
| 13 | 1.1.3.1 | Elaborar Cronograma e orçamentos preliminar |  | 1d | 2025-11-07 11:00 A | 2025-11-10 11:00 A | 9 | 100% |  | 2025-11-07 11:00 | 2025-11-10 11:00 | 1d | 2025-11-07 11:00 | 2025-11-10 11:00 |  | Raul | 2h | 2h | 40 | 40 | 40 |
| 14 | 1.1.3.2 | Revisar cronograma e orçamento preliminares |  | 1d | 2025-11-10 11:00 A | 2025-11-12 11:00 A | 13 | 100% |  | 2025-11-10 11:00 | 2025-11-12 11:00 | 1d | 2025-11-10 11:00 | 2025-11-12 11:00 |  | Gustavo | 1h | 1h | 80 | 80 | 80 |
| 15 | 1.2 | **Análise** |  | 12d? | 2025-10-29 09:00 A | 2025-11-13 18:00 A |  | 100% |  | 2025-10-29 09:00 | 2025-11-13 18:00 | 12d? | 2025-10-29 09:00 | 2025-11-13 18:00 |  |  | 43h | 43h | 350 | 260 | 350 |
| 16 | 1.2.1 | **Documento de Requisitos** |  | 12d? | 2025-10-29 09:00 A | 2025-11-13 18:00 A |  | 100% |  | 2025-10-29 09:00 | 2025-11-13 18:00 | 12d? | 2025-10-29 09:00 | 2025-11-13 18:00 |  |  | 43h | 43h | 350 | 260 | 350 |
| 17 | 1.2.1.1 | Reunir-se com cliente |  | 1d? | 2025-10-29 09:00 A | 2025-10-31 09:00 A |  | 100% |  | 2025-10-29 09:00 | 2025-10-31 09:00 | 1d? | 2025-10-29 09:00 | 2025-10-31 09:00 |  | Gustavo [12.5%] | 1h | 1h | 10 | 10 | 10 |
| 18 | 1.2.1.2 | Elaborar DRE |  | 1.5d? | 2025-10-31 09:00 A | 2025-11-05 09:00 A | 17 | 100% |  | 2025-10-31 09:00 | 2025-11-05 09:00 | 1.5d? | 2025-10-31 09:00 | 2025-11-05 09:00 |  | Gustavo | 12h | 12h | 80 | 80 | 80 |
| 19 | 1.2.1.3 | Revisar DRE |  | 1.5d? | 2025-11-05 09:00 A | 2025-11-10 09:00 A | 18 | 100% |  | 2025-11-05 09:00 | 2025-11-10 09:00 | 1.5d? | 2025-11-05 09:00 | 2025-11-10 09:00 |  | Gustavo | 12h | 12h | 80 | 80 | 80 |
| 20 | 1.2.1.4 | Submeter DRE para aprovação do cliente |  | 1d? | 2025-11-10 09:00 A | 2025-11-12 09:00 A | 19 | 100% |  | 2025-11-10 09:00 | 2025-11-12 09:00 | 1d? | 2025-11-10 09:00 | 2025-11-12 09:00 |  | Gustavo [25%] | 2h | 2h | 20 | 20 | 20 |
| 21 | 1.2.1.5 | **MRB** |  | 2d? | 2025-11-12 09:00 A | 2025-11-13 18:00 A |  | 100% |  | 2025-11-12 09:00 | 2025-11-13 18:00 | 2d? | 2025-11-12 09:00 | 2025-11-13 18:00 |  |  | 16h | 16h | 160 | 70 | 160 |
| 22 | 1.2.1.5.1 | Elabora MRB |  | 1d? | 2025-11-12 09:00 A | 2025-11-12 18:00 A | 20 | 100% |  | 2025-11-12 09:00 | 2025-11-12 18:00 | 1d? | 2025-11-12 09:00 | 2025-11-12 18:00 |  | Gustavo | 8h | 8h | 80 | 40 | 80 |
| 23 | 1.2.1.5.2 | Revisar MRB |  | 1d? | 2025-11-13 09:00 A | 2025-11-13 18:00 A | 22 | 100% |  | 2025-11-13 09:00 | 2025-11-13 18:00 | 1d? | 2025-11-13 09:00 | 2025-11-13 18:00 |  | Gustavo | 8h | 8h | 80 | 30 | 80 |
| 24 | 1.3 | **Projeto** |  | 22.82d? | 2025-11-14 16:51 | 2025-12-17 15:24 |  |  |  | 2025-11-14 16:51 | 2025-11-24 14:00 | 5.64d? | 2025-11-14 16:51 | 2025-11-24 14:00 | 0d |  | 28h |  | 240 | 205 |  |
| 25 | 1.3.1 | **Diagrama de Classes** |  | 2.14d? | 2025-11-14 16:51 | 2025-11-19 09:00 |  |  |  | 2025-11-14 16:51 | 2025-11-19 09:00 | 2.14d? | 2025-11-14 16:51 | 2025-11-19 09:00 | 0d |  | 10h |  | 120 | 120 |  |
| 26 | 1.3.1.1 | Elaborar Diagrama de Classes |  | 0.62d? | 2025-11-14 16:51 | 2025-11-17 13:51 | 20 |  |  | 2025-11-14 16:51 | 2025-11-17 13:51 | 0.62d? | 2025-11-14 16:51 | 2025-11-17 13:51 | 0.52d | Raul | 5h |  | 40 | 40 |  |
| 27 | 1.3.1.2 | Atualizar MR |  | 0.62d? | 2025-11-18 08:00 | 2025-11-19 09:00 | 26 |  |  | 2025-11-18 08:00 | 2025-11-19 09:00 | 0.62d? | 2025-11-18 08:00 | 2025-11-19 09:00 | 0d | Gustavo | 5h |  | 80 | 80 |  |

| ID | WBS | Task | Duration | Start | Finish | Predecessors | Complete | Remaining | Baseline start | Baseline finish | Baseline duration | Baseline 1 start | Baseline 1 finish | Total slack | Constraint | Resources | Work | Actual work | Cost | Baseline cost | Actual cost |
| --- | --- | --- | --- | --- | --- | --- | --- | --- | --- | --- | --- | --- | --- | --- | --- | --- | --- | --- | --- | --- | --- |
| 28 | 1.3.2 | **Modelo Entidade Relacionamento** | 20.68d? | 2025-11-19 09:00 | 2025-12-17 15:24 |  |  |  | 2025-11-20 14:00 | 2025-11-24 14:00 | 2d? | 2025-11-20 14:00 | 2025-11-24 14:00 | 0d |  |  | 18h |  | 120 | 85 |  |
| 29 | 1.3.2.1 | Elaborar MER | 1d? | 2025-11-19 09:00 | 2025-12-03 09:00 | 27 |  |  | 2025-11-20 14:00 | 2025-11-21 14:00 | 1d? | 2025-11-20 14:00 | 2025-11-21 14:00 | 0d | finish no earlier than 2025-11-20 18:00 | Gustavo | 8h |  | 80 | 60 |  |
| 30 | 1.3.2.2 | Revisar MER | 1.25d? | 2025-12-10 16:19 | 2025-12-17 15:24 | 29 |  |  | 2025-11-21 14:00 | 2025-11-24 14:00 | 1d? | 2025-11-21 14:00 | 2025-11-24 14:00 | 0d |  | Raul | 10h |  | 40 | 25 |  |
| 31 | 1.4 | **Implementação** | 25.36d? | 2025-11-12 09:00 A | 2025-12-17 11:54 |  | 93% | 1.89d? | 2025-11-12 09:00 | 2025-12-17 11:54 | 25.36d? | 2025-11-12 09:00 | 2025-12-17 11:54 | 0.31d |  |  | 319.62h | 293.18h | 2,980 | 3,680 | 2,660 |
| 32 | 1.4.1 | **Release 01** | 6d? | 2025-11-12 09:00 A | 2025-11-19 18:00 A |  | 100% |  | 2025-11-12 09:00 | 2025-11-19 18:00 | 6d? | 2025-11-12 09:00 | 2025-11-19 18:00 |  |  |  | 40.06h | 40.06h | 880 | 720 | 880 |
| 33 | 1.4.1.1 | **Implementação** | 6d? | 2025-11-12 09:00 A | 2025-11-19 18:00 A |  | 100% |  | 2025-11-12 09:00 | 2025-11-19 18:00 | 6d? | 2025-11-12 09:00 | 2025-11-19 18:00 |  |  |  | 16h | 16h | 640 | 480 | 640 |
| 34 | 1.4.1.1.1 | Implementar RFS01 | 0.5d | 2025-11-12 09:00 A | 2025-11-12 14:00 A | 30 | 100% |  | 2025-11-12 09:00 | 2025-11-12 14:00 | 0.5d | 2025-11-12 09:00 | 2025-11-12 14:00 |  |  | Kelly | 2h | 2h | 80 | 60 | 80 |
| 35 | 1.4.1.1.2 | Implementar RFS02 | 0.5d | 2025-11-13 09:00 A | 2025-11-13 14:00 A | 34 | 100% |  | 2025-11-13 09:00 | 2025-11-13 14:00 | 0.5d | 2025-11-13 09:00 | 2025-11-13 14:00 |  |  | Kelly | 2h | 2h | 80 | 60 | 80 |
| 36 | 1.4.1.1.3 | Implementar RFS03 | 0.5d? | 2025-11-14 09:00 A | 2025-11-14 14:00 A | 35 | 100% |  | 2025-11-14 09:00 | 2025-11-14 14:00 | 0.5d? | 2025-11-14 09:00 | 2025-11-14 14:00 |  |  | Kelly | 2h | 2h | 80 | 60 | 80 |
| 37 | 1.4.1.1.4 | Implementar RFS04 | 0.5d? | 2025-11-17 09:00 A | 2025-11-17 14:00 A | 36 | 100% |  | 2025-11-17 09:00 | 2025-11-17 14:00 | 0.5d? | 2025-11-17 09:00 | 2025-11-17 14:00 |  |  | Kelly | 2h | 2h | 80 | 60 | 80 |
| 38 | 1.4.1.1.5 | Implementar RFS05 | 0.5d? | 2025-11-18 09:00 A | 2025-11-18 14:00 A | 37 | 100% |  | 2025-11-18 09:00 | 2025-11-18 14:00 | 0.5d? | 2025-11-18 09:00 | 2025-11-18 14:00 |  |  | Kelly | 2h | 2h | 80 | 60 | 80 |
| 39 | 1.4.1.1.6 | Implementar RFS06 | 0.5d? | 2025-11-19 09:00 A | 2025-11-19 14:00 A | 38 | 100% |  | 2025-11-19 09:00 | 2025-11-19 14:00 | 0.5d? | 2025-11-19 09:00 | 2025-11-19 14:00 |  |  | Kelly | 2h | 2h | 80 | 60 | 80 |
| 40 | 1.4.1.1.7 | Implementar RFS07 | 0.25d | 2025-11-19 14:00 A | 2025-11-19 16:00 A | 39 | 100% |  | 2025-11-19 14:00 | 2025-11-19 16:00 | 0.25d | 2025-11-19 14:00 | 2025-11-19 16:00 |  |  | Kelly | 2h | 2h | 80 | 60 | 80 |
| 41 | 1.4.1.1.8 | Implementar RFS08 | 0.25d | 2025-11-19 16:00 A | 2025-11-19 18:00 A | 40 | 100% |  | 2025-11-19 16:00 | 2025-11-19 18:00 | 0.25d | 2025-11-19 16:00 | 2025-11-19 18:00 |  |  | Kelly | 2h | 2h | 80 | 60 | 80 |
| 42 | 1.4.1.2 | **Teste** | 3.16d | 2025-11-12 09:00 A | 2025-11-17 10:16 A |  | 100% |  | 2025-11-12 09:00 | 2025-11-17 10:16 | 3.16d | 2025-11-12 09:00 | 2025-11-17 10:16 |  |  |  | 24.06h | 24.06h | 240 | 240 | 240 |
| 43 | 1.4.1.2.1 | Testar RFC01 | 3.54d | 2025-11-12 09:00 A | 2025-11-17 10:16 A | 30 | 100% |  | 2025-11-12 09:00 | 2025-11-17 10:16 | 3.54d | 2025-11-12 09:00 | 2025-11-17 10:16 |  |  | Gustavo; Raul | 12.06h | 12.06h | 120 | 120 | 120 |
| 44 | 1.4.1.2.2 | Testar RFC02 | 3.16d | 2025-11-12 09:00 A | 2025-11-17 10:14 A | 30 | 100% |  | 2025-11-12 09:00 | 2025-11-17 10:14 | 3.16d | 2025-11-12 09:00 | 2025-11-17 10:14 |  |  | Gustavo; Raul | 12h | 12h | 120 | 120 | 120 |
| 45 | 1.4.2 | **Release 02** | 8.88d? | 2025-11-19 14:00 A | 2025-12-02 12:00 A |  | 100% |  | 2025-11-19 14:00 | 2025-12-02 12:00 | 8.88d? | 2025-11-19 14:00 | 2025-12-02 12:00 |  |  |  | 191h | 191h | 160 | 1,080 | 160 |
| 46 | 1.4.2.1 | **Implementação** | 8.38d? | 2025-11-20 08:00 A | 2025-12-02 12:00 A |  | 100% |  | 2025-11-20 08:00 | 2025-12-02 12:00 | 8.38d? | 2025-11-20 08:00 | 2025-12-02 12:00 |  |  |  | 63h | 63h | 80 | 960 | 80 |
| 47 | 1.4.2.1.1 | Implementar RFS09 | 1.75d | 2025-11-20 08:00 A | 2025-11-24 09:00 A | 41 | 100% |  | 2025-11-20 08:00 | 2025-11-24 09:00 | 1.75d | 2025-11-20 08:00 | 2025-11-24 09:00 |  |  | Kelly | 14h | 14h |  | 120 |  |
| 48 | 1.4.2.1.2 | Implementar RFS10 | 1.75d | 2025-11-24 09:00 A | 2025-11-26 10:00 A | 47 | 100% |  | 2025-11-24 09:00 | 2025-11-26 10:00 | 1.75d | 2025-11-24 09:00 | 2025-11-26 10:00 |  |  | Kelly | 14h | 14h |  | 120 |  |
| 49 | 1.4.2.1.3 | Implementar RFS11 | 0.12d? | 2025-11-26 10:00 A | 2025-11-26 11:00 A | 48 | 100% |  | 2025-11-26 10:00 | 2025-11-26 11:00 | 0.12d? | 2025-11-26 10:00 | 2025-11-26 11:00 |  |  | Kelly | 1h | 1h |  | 120 |  |
| 50 | 1.4.2.1.4 | Implementar RFS12 | 0.12d? | 2025-11-26 11:00 A | 2025-11-26 12:00 A | 49 | 100% |  | 2025-11-26 11:00 | 2025-11-26 12:00 | 0.12d? | 2025-11-26 11:00 | 2025-11-26 12:00 |  |  | Kelly | 1h | 1h |  | 120 |  |
| 51 | 1.4.2.1.5 | Implementar RFS13 | 0.5d? | 2025-11-27 08:00 A | 2025-11-27 14:00 A | 50 | 100% |  | 2025-11-27 08:00 | 2025-11-27 09:00 | 0.25d? | 2025-11-27 08:00 | 2025-11-27 09:00 |  |  | Kelly | 4h | 4h | 80 | 120 | 80 |
| 52 | 1.4.2.1.6 | Implementar RFS14 | 1.75d | 2025-11-26 10:00 A | 2025-11-28 11:00 A | 51 | 100% |  | 2025-11-26 10:00 | 2025-11-28 11:00 | 1.75d | 2025-11-26 10:00 | 2025-11-28 11:00 |  |  | Kelly | 14h | 14h |  | 120 |  |
| 53 | 1.4.2.1.7 | Implementar RFS15 | 0.12d? | 2025-11-28 11:00 A | 2025-11-28 12:00 A | 52 | 100% |  | 2025-11-28 11:00 | 2025-11-28 12:00 | 0.12d? | 2025-11-28 11:00 | 2025-11-28 12:00 |  |  | Kelly | 1h | 1h |  | 120 |  |
| 54 | 1.4.2.1.8 | Implementar RFS16 | 1.75d | 2025-11-28 11:00 A | 2025-12-02 12:00 A | 53 | 100% |  | 2025-11-28 11:00 | 2025-12-02 12:00 | 1.75d | 2025-11-28 11:00 | 2025-12-02 12:00 |  |  | Kelly | 14h | 14h |  | 120 |  |

| ID | WBS | Task | Duration | Start | Finish | Predecessors | Complete | Remaining | Baseline start | Baseline finish | Baseline duration | Baseline 1 start | Baseline 1 finish | Total slack | Free slack | Resources | Work | Actual work | Cost | Baseline cost | Actual cost |
| --- | --- | --- | --- | --- | --- | --- | --- | --- | --- | --- | --- | --- | --- | --- | --- | --- | --- | --- | --- | --- | --- |
| 55 | 1.4.2.2 | **Teste** | 7.88d | 2025-11-19 14:00 A | 2025-12-01 12:00 A |  | 100% |  | 2025-11-19 14:00 | 2025-11-25 14:00 | 4d | 2025-11-19 14:00 | 2025-11-25 14:00 |  |  |  | 128h | 128h | 80 | 120 | 80 |
| 56 | 1.4.2.2.1 | Teste RFC03 | 6.5d | 2025-11-19 14:00 A | 2025-12-01 12:00 A | 41 | 100% |  | 2025-11-19 14:00 | 2025-11-25 14:00 | 4d | 2025-11-19 14:00 | 2025-11-25 14:00 |  |  | Gustavo; Raul | 64h | 64h | 40 | 60 | 40 |
| 57 | 1.4.2.2.2 | Testar RFC04 | 6.5d | 2025-11-19 14:00 A | 2025-12-01 12:00 A | 41 | 100% |  | 2025-11-19 14:00 | 2025-11-25 14:00 | 4d | 2025-11-19 14:00 | 2025-11-25 14:00 |  |  | Gustavo; Raul | 64h | 64h | 40 | 60 | 40 |
| 58 | 1.4.3 | **Release 03** | 7d? | 2025-12-02 13:00 A | 2025-12-11 12:00 A |  | 100% |  | 2025-12-02 13:00 | 2025-12-11 12:00 | 7d? | 2025-12-02 13:00 | 2025-12-11 12:00 |  |  |  | 52.12h | 52.12h | 1,280 | 1,280 | 1,280 |
| 59 | 1.4.3.1 | **Implementação** | 7d? | 2025-12-02 13:00 A | 2025-12-11 12:00 A |  | 100% |  | 2025-12-02 13:00 | 2025-12-11 12:00 | 7d? | 2025-12-02 13:00 | 2025-12-11 12:00 |  |  |  | 18.16h | 18.16h | 1,120 | 1,120 | 1,120 |
| 60 | 1.4.3.1.1 | Implementar RFS17 | 1.2d | 2025-12-02 13:00 A | 2025-12-03 14:37 A | 54 | 100% |  | 2025-12-02 13:00 | 2025-12-03 14:37 | 1.2d | 2025-12-02 13:00 | 2025-12-03 14:37 |  |  | Kelly; Gustavo | 2h | 2h | 160 | 140 | 160 |
| 61 | 1.4.3.1.2 | Implementar RFS18 | 1.17d? | 2025-12-05 09:00 A | 2025-12-08 10:21 A | 60 | 100% |  | 2025-12-05 09:00 | 2025-12-08 10:21 | 1.17d? | 2025-12-05 09:00 | 2025-12-08 10:21 |  |  | Kelly; Gustavo | 2h | 2h | 160 | 140 | 160 |
| 62 | 1.4.3.1.3 | Implementar RFS19 | 0.25d? | 2025-12-09 10:00 A | 2025-12-09 12:00 A | 61 | 100% |  | 2025-12-09 10:00 | 2025-12-09 12:00 | 0.25d? | 2025-12-09 10:00 | 2025-12-09 12:00 |  |  | Kelly; Gustavo | 2h | 2h | 160 | 140 | 160 |
| 63 | 1.4.3.1.4 | Implementar RFS20 | 0.25d? | 2025-12-09 13:00 A | 2025-12-09 15:00 A | 62 | 100% |  | 2025-12-09 13:00 | 2025-12-09 15:00 | 0.25d? | 2025-12-09 13:00 | 2025-12-09 15:00 |  |  | Kelly; Gustavo | 2h | 2h | 160 | 140 | 160 |
| 64 | 1.4.3.1.5 | Implementar RFS21 | 0.38d? | 2025-12-10 08:00 A | 2025-12-10 11:00 A | 63 | 100% |  | 2025-12-09 15:00 | 2025-12-10 10:00 | 0.5d? | 2025-12-09 15:00 | 2025-12-10 10:00 |  |  | Gustavo; Kelly | 4h | 4h | 160 | 140 | 160 |
| 65 | 1.4.3.1.6 | Implementar RFS22 | 0.25d? | 2025-12-10 10:00 A | 2025-12-10 12:00 A | 64 | 100% |  | 2025-12-10 10:00 | 2025-12-10 12:00 | 0.25d? | 2025-12-10 10:00 | 2025-12-10 12:00 |  |  | Gustavo; Kelly | 4h | 4h | 160 | 140 | 160 |
| 66 | 1.4.3.1.7 | Implementar RFS23 | 0.25d? | 2025-12-11 10:00 A | 2025-12-11 12:00 A | 65 | 100% |  | 2025-12-11 10:00 | 2025-12-11 12:00 | 0.25d? | 2025-12-11 10:00 | 2025-12-11 12:00 |  |  | Gustavo; Kelly | 2.16h | 2.16h | 160 | 140 | 160 |
| 67 | 1.4.3.2 | **Teste** | 6.42d | 2025-12-02 13:00 A | 2025-12-10 16:19 A |  | 100% |  | 2025-12-02 13:00 | 2025-12-10 16:19 | 6.42d | 2025-12-02 13:00 | 2025-12-10 16:19 |  |  |  | 33.96h | 33.96h | 160 | 160 | 160 |
| 68 | 1.4.3.2.1 | Teste RFC05 | 2d | 2025-12-03 14:39 A | 2025-12-05 14:39 A | 54 | 100% |  | 2025-12-03 14:39 | 2025-12-05 14:39 | 2d | 2025-12-03 14:39 | 2025-12-05 14:39 |  |  | Raul | 16h | 16h | 40 | 40 | 40 |
| 69 | 1.4.3.2.2 | Teste RFC06 | 2d | 2025-12-02 13:00 A | 2025-12-10 16:19 A | 54 | 100% |  | 2025-12-02 13:00 | 2025-12-10 16:19 | 2d | 2025-12-02 13:00 | 2025-12-10 16:19 |  |  | Raul | 16h | 16h | 40 | 40 | 40 |
| 70 | 1.4.3.2.3 | Teste RFC07 | 0.09d | 2025-12-03 10:01 A | 2025-12-03 10:46 A | 54 | 100% |  | 2025-12-03 10:01 | 2025-12-09 14:20 | 1.21d | 2025-12-03 10:01 | 2025-12-09 14:20 |  |  | Raul | 0.75h | 0.75h | 40 | 40 | 40 |
| 71 | 1.4.3.2.4 | Teste RFC08 | 0.15d | 2025-12-05 14:39 A | 2025-12-05 15:52 A | 54 | 100% |  | 2025-12-05 14:39 | 2025-12-08 16:19 | 1.21d | 2025-12-05 14:39 | 2025-12-08 16:19 |  |  | Raul | 1.21h | 1.21h | 40 | 40 | 40 |
| 72 | 1.4.4 | **Release 04** | 3.99d? | 2025-12-11 13:00 A | 2025-12-17 11:54 |  | 38% | 2.48d? | 2025-12-11 13:00 | 2025-12-17 11:54 | 3.99d? | 2025-12-11 13:00 | 2025-12-17 11:54 | 0.31d |  |  | 36.44h | 10h | 660 | 600 | 340 |
| 73 | 1.4.4.1 | **Implementação** | 2.5d? | 2025-12-11 13:00 A | 2025-12-15 17:00 |  | 80% | 0.5d? | 2025-12-11 13:00 | 2025-12-12 17:00 | 1.5d? | 2025-12-11 13:00 | 2025-12-12 17:00 | 0.04d |  |  | 14h | 10h | 500 | 360 | 340 |
| 74 | 1.4.4.1.1 | Implementar RFS24 | 1d? | 2025-12-11 13:00 A | 2025-12-12 12:00 A | 66 | 100% |  |  |  |  |  |  |  |  | Kelly [25%] | 2h | 2h | 20 |  | 20 |
| 75 | 1.4.4.1.2 | Implementar RFS25 | 0.25d? | 2025-12-12 13:00 A | 2025-12-12 15:00 A | 74 | 100% |  | 2025-12-11 13:00 | 2025-12-11 15:00 | 0.25d? | 2025-12-11 13:00 | 2025-12-11 15:00 |  |  | Kelly | 2h | 2h | 80 | 60 | 80 |
| 76 | 1.4.4.1.3 | Implementar RFS26 | 0.25d? | 2025-12-12 15:00 A | 2025-12-12 17:00 A | 75 | 100% |  | 2025-12-11 15:00 | 2025-12-11 17:00 | 0.25d? | 2025-12-11 15:00 | 2025-12-11 17:00 |  |  | Kelly | 2h | 2h | 80 | 60 | 80 |
| 77 | 1.4.4.1.4 | Implementar RFS27 | 0.25d? | 2025-12-12 17:00 A | 2025-12-15 10:00 A | 76 | 100% |  | 2025-12-11 17:00 | 2025-12-12 10:00 | 0.25d? | 2025-12-11 17:00 | 2025-12-12 10:00 |  |  | Kelly | 2h | 2h | 80 | 60 | 80 |
| 78 | 1.4.4.1.5 | Implementar RFS28 | 0.25d | 2025-12-15 10:00 A | 2025-12-15 12:00 A | 77 | 100% |  | 2025-12-12 10:00 | 2025-12-12 12:00 | 0.25d | 2025-12-12 10:00 | 2025-12-12 12:00 |  |  | Kelly | 2h | 2h | 80 | 60 | 80 |
| 79 | 1.4.4.1.6 | Implementar RFS29 | 0.25d? | 2025-12-15 13:00 | 2025-12-15 15:00 | 78 |  |  | 2025-12-12 13:00 | 2025-12-12 15:00 | 0.25d? | 2025-12-12 13:00 | 2025-12-12 15:00 | 0.04d | 0d | Kelly | 2h |  | 80 | 60 |  |
| 80 | 1.4.4.1.7 | Implementar RFS30 | 0.25d? | 2025-12-15 15:00 | 2025-12-15 17:00 | 79 |  |  | 2025-12-12 15:00 | 2025-12-12 17:00 | 0.25d? | 2025-12-12 15:00 | 2025-12-12 17:00 | 0.04d | 0d | Kelly | 2h |  | 80 | 60 |  |

| ID | WBS | Task | Duration | Start | Finish | Predecessors | Baseline start | Baseline finish | Baseline duration | Baseline 1 start | Baseline 1 finish | Total slack | Resources | Work | Cost | Baseline cost |
| --- | --- | --- | --- | --- | --- | --- | --- | --- | --- | --- | --- | --- | --- | --- | --- | --- |
| 81 | 1.4.4.2 | **Teste** | 3.99d | 2025-12-11 13:00 | 2025-12-17 11:54 |  | 2025-12-11 13:00 | 2025-12-17 11:54 | 3.99d | 2025-12-11 13:00 | 2025-12-17 11:54 | 0.31d |  | 22.44h | 160 | 240 |
| 82 | 1.4.4.2.1 | Teste RFC09 | 0.94d | 2025-12-12 08:00 | 2025-12-17 11:54 | 66 | 2025-12-12 08:00 | 2025-12-17 11:54 | 0.94d | 2025-12-12 08:00 | 2025-12-17 11:54 | 0d | Gustavo | 7.48h | 80 | 80 |
| 83 | 1.4.4.2.2 | Teste RFC10 | 0.94d | 2025-12-12 11:28 | 2025-12-17 09:04 | 66 | 2025-12-12 11:28 | 2025-12-17 09:04 | 0.94d | 2025-12-12 11:28 | 2025-12-17 09:04 | 0.67d | Raul | 7.48h | 40 | 40 |
| 84 | 1.4.4.2.3 | Teste RFC11 | 0.94d | 2025-12-11 13:00 | 2025-12-12 11:28 | 66 | 2025-12-11 13:00 | 2025-12-12 11:28 | 0.94d | 2025-12-11 13:00 | 2025-12-12 11:28 | 3.37d | Raul | 7.48h | 40 | 40 |
| 85 | 1.5 | **Monitoramento e Controle** | 1.76d | 2025-12-15 17:00 | 2025-12-17 15:07 |  | 2025-12-12 17:00 | 2025-12-16 15:07 | 1.76d | 2025-12-12 17:00 | 2025-12-16 15:07 | 0.04d |  | 16h | 200 | 180 |
| 86 | 1.5.1 | Acompanhar Projeto | 1.88d | 2025-12-15 17:00 | 2025-12-17 15:07 | 80 | 2025-12-12 17:00 | 2025-12-16 15:07 | 1.88d | 2025-12-12 17:00 | 2025-12-16 15:07 | 0.04d | Kelly; Gustavo; Raul | 16h | 200 | 180 |
| 87 | 1.6 | **Gerencia de Configuração** | 1d? | 2025-10-29 09:00 | 2025-10-29 18:00 |  | 2025-10-29 09:00 | 2025-10-29 18:00 | 1d? | 2025-10-29 09:00 | 2025-10-29 18:00 | 34.67d |  | 8h |  |  |
| 88 | 1.6.1 | Elaborar branch | 1d? | 2025-10-29 09:00 | 2025-10-29 18:00 |  | 2025-10-29 09:00 | 2025-10-29 18:00 | 1d? | 2025-10-29 09:00 | 2025-10-29 18:00 | 34.67d |  | 4h |  |  |
| 89 | 1.6.2 | Realizar Merge da Branch x Trunk | 1d? | 2025-10-29 09:00 | 2025-10-29 18:00 |  | 2025-10-29 09:00 | 2025-10-29 18:00 | 1d? | 2025-10-29 09:00 | 2025-10-29 18:00 | 34.67d |  | 4h |  |  |
